# PeNcIL – Planirani raspored aktivnosti

Schedule from MS Project, 2019-11-13 to 2020-01-09, 4 hours a day.
SWETeam

## Calendars

- Standard: Mon-Sun 16:00-20:00.

## Resources

| Resource |
| --- |
| Architect |
| Architecture Reviewer |
| Business-Process Analyst |
| Business Designer |
| Business-Model Reviewer |
| Code Reviewer |
| Configuration Manager |
| Course Developer |
| Database Designer |
| Deployment Manager |
| Design Reviewer |
| Designer |
| Implementer |
| Integration Tester |
| Performance Tester |
| Process Engineer |
| Project Manager |
| Requirements Reviewer |
| Stakeholder |
| System Administrator |
| System Analyst |
| System Integrator |
| System Tester |
| Technical Writer |
| Test Designer |
| Tool Smith |
| Use-Case Author |
| User-Interface Designer |
| Miloš Petrović |
| Ena Trtovac |

## Schedule

| ID | WBS | Task | Type | Duration | Start | Finish | Predecessors | Baseline start | Baseline finish | Baseline duration | Total slack | Free slack | Constraint | Resources | Work |
| --- | --- | --- | --- | --- | --- | --- | --- | --- | --- | --- | --- | --- | --- | --- | --- |
| 1 | 1 | **Očekivani rezultati** |  | 58d | 2019-11-13 | 2020-01-09 |  | 1998-06-11 | 1998-10-19 | 186d | 0d |  |  | Miloš Petrović | 232h |
| 2 | 1.1 | Početak projekta | milestone | 0d | 2019-11-13 | 2019-11-13 | 16SS | 1998-06-11 | 1998-06-11 | 0d | 58d |  | start no earlier than 2017-10-17 | Miloš Petrović |  |
| 3 | 1.2 | Vizija sistema | milestone | 0d | 2019-11-17 | 2019-11-17 | 19 | 1998-06-17 | 1998-06-17 | 0d | 53d |  |  | Miloš Petrović |  |
| 4 | 1.3 | Dokument o zahtevima | milestone | 0d | 2019-11-29 | 2019-11-29 | 25 |  |  |  | 41.5d |  |  | Miloš Petrović |  |
| 5 | 1.4 | Arhitekturni prototip | milestone | 0d | 2019-11-30 | 2019-11-30 | 26 |  |  |  | 40d |  |  | Miloš Petrović |  |
| 6 | 1.5 | Prototip korisničkog interfejsa | milestone | 0d | 2019-12-02 | 2019-12-02 | 28 |  |  |  | 38d |  |  | Miloš Petrović |  |
| 7 | 1.6 | Arhitekturni projekat | milestone | 0d | 2019-11-25 | 2019-11-25 | 29 | 1998-08-20 | 1998-08-20 | 0d | 45.5d |  |  | Miloš Petrović |  |
| 8 | 1.7 | Detaljni projekat | milestone | 0d | 2019-12-09 | 2019-12-09 | 33 | 1998-10-06 | 1998-10-06 | 0d | 31d |  |  | Miloš Petrović |  |
| 9 | 1.8 | Beta verzija | milestone | 0d | 2019-12-19 | 2019-12-19 | 34 | 1998-10-19 | 1998-10-19 | 0d | 21d |  |  | Miloš Petrović |  |
| 10 | 1.9 | Plan testiranja | milestone | 0d | 2019-12-04 | 2019-12-04 | 35 |  |  |  | 36d |  |  | Miloš Petrović |  |
| 11 | 1.10 | Izveštaj o testiranju | milestone | 0d | 2019-12-20 | 2019-12-20 | 41 |  |  |  | 20d |  |  | Miloš Petrović |  |
| 12 | 1.11 | Konačna verzija | milestone | 0d | 2019-12-23 | 2019-12-23 | 38 |  |  |  | 17d |  |  | Miloš Petrović |  |
| 13 | 1.12 | Korisničko uputstvo | milestone | 0d | 2020-01-09 | 2020-01-09 | 46 |  |  |  | 0.5d |  |  | Miloš Petrović |  |
| 14 | 1.13 | Prezentacija proizvoda | milestone | 0d | 2020-01-09 | 2020-01-09 | 44 |  |  |  | 0d |  |  | Miloš Petrović |  |
| 16 | 2 | **Faza planiranja projekta** |  | 9d | 2019-11-13 | 2019-11-21 |  | 1998-06-11 | 1998-06-17 | 10d | 13d | 0d |  | Miloš Petrović | 108h |
| 17 | 2.1 | **Preliminarna iteracija** |  | 9d | 2019-11-13 | 2019-11-21 |  | 1998-06-11 | 1998-06-17 | 10d | 13d |  |  | Miloš Petrović | 72h |
| 18 | 2.1.1 | Definisanje zahteva |  | 3d | 2019-11-13 | 2019-11-15 |  | 1998-06-11 | 1998-06-15 | 6d | 13d | 0d | start no earlier than 2019-11-13 | Miloš Petrović | 12h |
| 19 | 2.1.2 | Izrada vizije sistema |  | 2d | 2019-11-16 | 2019-11-17 | 18 | 1998-06-11 | 1998-06-17 | 10d | 13d | 0d |  | Miloš Petrović | 8h |
| 20 | 2.1.3 | Modelovanje domena |  | 1d | 2019-11-18 | 2019-11-18 | 19 | 1998-06-11 | 1998-06-17 | 10d | 13d | 0d |  | Miloš Petrović | 4h |
| 21 | 2.1.4 | Analiza slučajeva korišćenja |  | 3d | 2019-11-19 | 2019-11-21 | 20 | 1998-06-19 | 1998-06-23 | 6d | 13d |  |  | Miloš Petrović | 12h |
| 23 | 3 | **Faza razrade projekta** |  | 11d | 2019-11-22 | 2019-12-02 | 16 | 1998-06-18 | 1998-08-20 | 92d | 7d | 0d |  | Miloš Petrović | 150h |
| 24 | 3.1 | **Iteracija R1 - Razvoj arhitekturnog prototipa** |  | 11d | 2019-11-22 | 2019-12-02 |  | 1998-06-18 | 1998-07-20 | 46d | 7d |  |  | Miloš Petrović | 106h |
| 25 | 3.1.1 | Izrada dokumenta o zahtevima |  | 3.5d | 2019-11-26 | 2019-11-29 |  | 1998-06-19 | 1998-06-25 | 10d | 10.5d | 0d | start no earlier than 2019-11-26 | Miloš Petrović | 14h |
| 26 | 3.1.2 | Implementacija arhitekturnog prototipa |  | 5d | 2019-11-26 | 2019-11-30 |  | 1998-07-01 | 1998-07-10 | 16d | 9d | 0d | start no earlier than 2019-11-26 | Miloš Petrović | 20h |
| 27 | 3.1.3 | Testiranje arhitekture |  | 0.5d | 2019-11-28 | 2019-11-28 |  | 1998-07-08 | 1998-07-16 | 14d | 11.5d |  | start no earlier than 2019-11-28 | Miloš Petrović | 2h |
| 28 | 3.1.4 | Implementacija prototipa korisničkog interfejsa |  | 3d | 2019-11-30 | 2019-12-02 |  | 1998-06-18 | 1998-07-20 | 46d | 7d | 0d | start no earlier than 2019-11-30 | Miloš Petrović | 12h |
| 29 | 3.1.5 | Izrada arhitekturnog projekta |  | 3.5d | 2019-11-22 | 2019-11-25 |  | 1998-06-23 | 1998-07-06 | 20d | 14.5d | 0d | start no earlier than 2019-11-16 | Miloš Petrović | 14h |

| ID | WBS | Task | Duration | Start | Finish | Predecessors | Baseline start | Baseline finish | Baseline duration | Total slack | Free slack | Constraint | Resources | Work |
| --- | --- | --- | --- | --- | --- | --- | --- | --- | --- | --- | --- | --- | --- | --- |
| 31 | 4 | **Faza izrade projekta** | 21d | 2019-12-03 | 2019-12-23 | 23 | 1998-08-21 | 1998-10-06 | 66d | 7d |  |  | Miloš Petrović | 312h |
| 32 | 4.1 | **Iteracija I1 - Razvoj beta verzije** | 17d | 2019-12-03 | 2019-12-19 |  | 1998-08-21 | 1998-09-04 | 22d | 7d | 0d |  | Miloš Petrović | 188h |
| 33 | 4.1.1 | Izrada detaljnog projekta | 7d | 2019-12-03 | 2019-12-09 |  |  |  |  | 17d | 0d | start no earlier than 2019-11-25 | Miloš Petrović | 28h |
| 34 | 4.1.2 | Implementacija beta verzije | 17d | 2019-12-03 | 2019-12-19 |  | 1998-08-24 | 1998-08-31 | 12d | 7d | 0d | start no earlier than 2019-12-02 | Miloš Petrović | 68h |
| 35 | 4.1.3 | Izrada plana testiranja | 2d | 2019-12-03 | 2019-12-04 |  |  |  |  | 18d | 0d | start no earlier than 2019-12-03 | Miloš Petrović | 8h |
| 36 | 4.1.4 | Testiranje sistema | 2d | 2019-12-10 | 2019-12-11 | 35 | 1998-08-24 | 1998-09-02 | 16d | 13d | 0d | start no earlier than 2019-12-10 | Miloš Petrović | 8h |
| 37 | 4.1.5 | Izrada izveštaja o testiranju | 2d | 2019-12-12 | 2019-12-13 | 36 | 1998-08-21 | 1998-09-04 | 22d | 13d |  |  | Miloš Petrović | 8h |
| 38 | 4.2 | **Iteracija I2 - Razvoj konačne verzije** | 4d | 2019-12-20 | 2019-12-23 | 32 | 1998-09-07 | 1998-09-21 | 22d | 7d | 0d |  | Miloš Petrović | 40h |
| 39 | 4.2.1 | Implementacija konačne verzije | 4d | 2019-12-20 | 2019-12-23 |  | 1998-09-08 | 1998-09-15 | 12d | 7d |  | start no earlier than 2019-12-14 | Miloš Petrović | 16h |
| 40 | 4.2.2 | Testiranje konačne verzije | 1d | 2019-12-20 | 2019-12-20 |  | 1998-09-08 | 1998-09-17 | 16d | 10d |  | start no earlier than 2019-12-19 | Miloš Petrović | 4h |
| 41 | 4.2.3 | Ažuriranje izveštaja o testiranju | 1d | 2019-12-20 | 2019-12-20 |  | 1998-09-07 | 1998-09-21 | 22d | 10d | 0d | start no earlier than 2019-12-20 | Miloš Petrović | 4h |
| 43 | 5 | **Faza okončanja projekta** | 10d | 2019-12-31 | 2020-01-09 | 38 | 1998-10-07 | 1998-10-19 | 18d | 0d |  |  | Miloš Petrović | 120h |
| 44 | 5.1 | **Iteracija O1 - Instalacija sistema** | 10d | 2019-12-31 | 2020-01-09 |  | 1998-10-07 | 1998-10-19 | 18d | 0d |  |  | Miloš Petrović | 80h |
| 45 | 5.1.1 | Sređivanje projektne dokumentacije | 3.5d | 2019-12-31 | 2020-01-03 |  |  |  |  | 0d |  | start no earlier than 2019-12-31 | Miloš Petrović | 14h |
| 46 | 5.1.2 | Izrada korisničkog uputstva | 6d | 2020-01-03 | 2020-01-09 | 45 | 1998-10-07 | 1998-10-19 | 18d | 0d |  |  | Miloš Petrović | 24h |
| 47 | 5.1.3 | Instalacija sistema | 0.5d | 2020-01-09 | 2020-01-09 | 46 |  |  |  | 0d |  |  | Miloš Petrović | 2h |
